# Progetto 2 PM

Schedule from MS Project, 2020-12-22 to 2021-05-11.

## Calendars

- Standard: Mon-Fri 09:00-13:00, 14:00-18:00; Sat-Sun off.

## Resources

| Resource |
| --- |
| gabriele |
| gabriele,giorgio |
| prog web |
| dev |
| dev1 |
| dev2 |
| dev 1 |
| dev 2 |
| dev3 |
| prog web , ux |
| prog web, ux |
| dev1, dev2 |

## Schedule

| ID | WBS | Task | Type | Duration | Start | Finish | Predecessors | Total slack | Free slack |
| --- | --- | --- | --- | --- | --- | --- | --- | --- | --- |
| 1 | 1 | **OR1:GESTIONE E CONTROLLO** |  | 101d | 2020-12-22 | 2021-05-11 |  | 0d |  |
| 2 | 1.1 | Business Case e Piano di Progetto |  | 3d | 2020-12-22 | 2020-12-24 |  | 0d |  |
| 3 | 1.2 | Documento di Gestione dei Rischi |  | 2d | 2020-12-25 | 2020-12-28 | 2 | 0d |  |
| 4 | 1.3 | Documento di Gestione della Qualità |  | 3d | 2020-12-29 | 2020-12-31 | 3 | 0d |  |
| 5 | 1.4 | Documento di Gestione della Comunicazione |  | 5d | 2021-01-01 | 2021-01-07 | 4 | 0d |  |
| 6 | 1.5 | Documento di Gestione del Timing, del Budget e delle Risorse |  | 2d | 2021-01-08 | 2021-01-11 | 5 | 0d |  |
| 7 | 1.6 | Documento di Controllo e Monitoraggio sugli Obiettivi del Progetto |  | 78d | 2021-01-12 | 2021-04-29 | 6 | 0d |  |
| 8 | 1.7 | **Documento di Chiusura e Lessons Learned** |  | 8d | 2021-04-30 | 2021-05-11 | 7 | 0d |  |
| 9 | 1.7.1 | Documento di Chiusura |  | 3d | 2021-04-30 | 2021-05-04 |  | 0d |  |
| 10 | 1.7.2 | Lessons Learned |  | 5d | 2021-05-05 | 2021-05-11 | 9 | 0d |  |
| 11 | 2 | **OR2: Realizzazione Back-end** |  | 7d? | 2021-01-11 | 2021-01-20 | 6 | 2d | 0d |
| 12 | 2.1 | **Accesso al dominio** |  | 7d | 2021-01-12 | 2021-01-20 |  | 2d |  |
| 13 | 2.1.1 | Inizializzazione dominio web |  | 7d | 2021-01-12 | 2021-01-20 |  | 2d |  |
| 14 | 2.1.2 | Avvio server sul dominio |  | 1d | 2021-01-12 | 2021-01-12 |  | 8d |  |
| 15 | 2.2 | **Documento di progettazione del database** |  | 0d? | 2021-01-11 | 2021-01-11 |  | 9d |  |
| 16 | 2.2.1 | Progettazione concettuale del database | manual | 1d? | 2020-12-22 | 2020-12-22 |  |  |  |
| 17 | 2.2.2 | Realizzazione diagramma E/R | manual | 1d? | 2020-12-22 | 2020-12-22 |  |  |  |
| 18 | 2.2.3 | Progettazione logica del database | manual | 1d | 2020-12-22 | 2020-12-22 |  |  |  |
| 19 | 2.3 | **Database** |  | 0d? | 2021-01-11 | 2021-01-11 |  | 9d |  |
| 20 | 2.3.1 | Progettazione logica del database | manual | 1d? | 2020-12-22 | 2020-12-22 |  |  |  |
| 21 | 2.3.2 | Progettazione fisica del database | manual | 1d? | 2020-12-22 | 2020-12-22 |  |  |  |
| 22 | 2.3.3 | Implementazione del database | manual | 1d? | 2020-12-22 | 2020-12-22 |  |  |  |
| 23 | 2.3.4 | Progettazione API del Database | manual | 1d? | 2020-12-22 | 2020-12-22 |  |  |  |
| 24 | 2.3.5 | Implementazione API del Database | manual | 1d? | 2020-12-22 | 2020-12-22 |  |  |  |

| ID | WBS | Task | Type | Duration | Start | Finish | Predecessors | Total slack | Free slack | Constraint |
| --- | --- | --- | --- | --- | --- | --- | --- | --- | --- | --- |
| 25 | 2.4 | **Accesso al CMS** |  | 0d | 2021-01-11 | 2021-01-11 |  | 9d |  |  |
| 26 | 2.4.1 | Installazione del CMS | manual | 1d | 2020-12-22 | 2020-12-22 |  |  |  |  |
| 27 | 2.5 | **Autenticazione** |  | 0d? | 2021-01-11 | 2021-01-11 |  | 9d |  |  |
| 28 | 2.5.1 | Proggettazione del plugin di autenticazione | manual | 1d? | 2020-12-22 | 2020-12-22 |  |  |  |  |
| 29 | 2.5.2 | Interfaccia di autenticazione | manual | 1d | 2020-12-22 | 2020-12-22 |  |  |  |  |
| 30 | 2.6 | **Pagamento** |  | 1d? | 2021-01-12 | 2021-01-12 |  | 8d |  |  |
| 31 | 2.6.1 | Progettazione del plugin di pagamento |  | 1d? | 2021-01-12 | 2021-01-12 |  | 8d |  |  |
| 32 | 2.6.2 | Interfaccia di pagamento |  | 1d | 2021-01-12 | 2021-01-12 |  | 8d |  |  |
| 33 | 2.7 | **Gestione Ordini** |  | 0d? | 2021-01-11 | 2021-01-11 |  | 9d |  |  |
| 34 | 2.7.1 | Progettazione plugin di gestione ordini | manual | 1d? | 2020-12-22 | 2020-12-22 |  |  |  |  |
| 35 | 2.7.2 | Implementazione plugin di gestione ordini | manual | 1d? | 2020-12-22 | 2020-12-22 |  |  |  |  |
| 36 | 3 | **OR3: Organizzazione della rete locale** |  | 45d | 2021-01-21 | 2021-03-24 | 11 | 2d | 0d |  |
| 37 | 3.1 | **Report pianificazione dell’infrastruttura di rete** |  | 16d | 2021-01-21 | 2021-02-11 |  | 2d | 0d |  |
| 38 | 3.1.1 | Analisi di mercato sulle soluzioni topologiche moderne |  | 2d | 2021-01-21 | 2021-01-22 |  | 2d | 0d |  |
| 39 | 3.1.2 | Individuazione asset informatici e rischi correlati |  | 3d | 2021-01-25 | 2021-01-27 | 38 | 2d | 0d |  |
| 40 | 3.1.3 | Pianificazione su software di simulazione di topologie di rete |  | 7d | 2021-01-28 | 2021-02-05 | 39 | 2d | 0d |  |
| 41 | 3.1.4 | Stesura di report finale sulla pianificazione della rete |  | 4d | 2021-02-08 | 2021-02-11 | 40 | 2d | 0d |  |
| 42 | 3.2 | **Realizzazione dell’infrastruttura di rete** |  | 20d | 2021-02-12 | 2021-03-11 | 41, 37 | 2d |  |  |
| 43 | 3.2.1 | Acquisto degli apparati necessari e realizzazione della rete |  | 20d | 2021-02-12 | 2021-03-11 |  | 2d | 0d |  |
| 44 | 3.3 | **Rafforzamento della sicurezza informatica** |  | 26d | 2021-02-12 | 2021-03-19 | 37 | 2d | 0d |  |
| 45 | 3.3.1 | Valutazione preventivi con aziende specializzate in penetration testing |  | 10d | 2021-02-12 | 2021-02-25 | 43SS | 12d | 10d | start no earlier than 2021-01-13 |
| 46 | 3.3.2 | Svolgimento penetration testing da parte di due aziende scelte |  | 2d | 2021-03-12 | 2021-03-15 | 43, 45 | 2d | 0d |  |
| 47 | 3.3.3 | Simulazione Disaster Recovery |  | 2d | 2021-03-16 | 2021-03-17 | 46 | 2d | 0d |  |
| 48 | 3.3.4 | Stesura delle linee guida per un piano di Disaster Recovery |  | 2d | 2021-03-18 | 2021-03-19 | 47 | 2d | 0d |  |

| ID | WBS | Task | Duration | Start | Finish | Predecessors | Total slack | Free slack | Resources | Work |
| --- | --- | --- | --- | --- | --- | --- | --- | --- | --- | --- |
| 49 | 3.4 | **Corso anti social-engineering per i dipendenti** | 23d | 2021-02-12 | 2021-03-16 | 37 | 8d |  |  |  |
| 50 | 3.4.1 | Valutazione preventivi con aziende specializzate nell’attività di training per il contrasto al social engineering | 7d | 2021-02-12 | 2021-02-22 | 43SS | 21d | 13d |  |  |
| 51 | 3.4.2 | Contrattazione ed erogazione del corso anti social-engineering da parte dell'azienda scelta | 3d | 2021-03-12 | 2021-03-16 | 50, 43 | 8d |  |  |  |
| 52 | 3.5 | Messa in opera dell’infrastruttura di rete | 3d | 2021-03-22 | 2021-03-24 | 48, 44 | 2d |  |  |  |
| 53 | 4 | **OR4: Realizzazione Fron-end** | 32d | 2021-03-25 | 2021-05-07 | 36 | 2d |  |  | 484h |
| 54 | 4.1 | **Mappa di navigazione del sito** | 1d | 2021-03-25 | 2021-03-25 |  | 33d |  |  |  |
| 55 | 4.1.1 | Realizzazione mappa di navigazione del sito | 1d | 2021-03-25 | 2021-03-25 |  | 33d |  |  |  |
| 56 | 4.2 | **Template base** | 5d | 2021-03-25 | 2021-03-31 |  | 2d | 0d |  | 64h |
| 57 | 4.2.1 | Scelta colori e font del sito | 2d | 2021-03-25 | 2021-03-26 |  | 2d | 0d | prog web, ux | 16h |
| 58 | 4.2.2.1 | Progettazione Header | 2d | 2021-03-29 | 2021-03-30 | 57 | 2d | 0d | prog web, ux | 16h |
| 59 | 4.2.2.2 | Realizzazione Header | 1d | 2021-03-31 | 2021-03-31 | 58 | 2d |  | dev1 | 8h |
| 60 | 4.2.3.1 | Progettazione Footer | 2d | 2021-03-29 | 2021-03-30 | 57 | 2d | 0d | prog web, ux | 16h |
| 61 | 4.2.3.2 | Realizzazione Footer | 1d | 2021-03-31 | 2021-03-31 | 60 | 2d |  | dev2 | 8h |
| 62 | 4.3 | **Area personale e autenticazione** | 5d | 2021-04-01 | 2021-04-07 | 56 | 2d | 0d |  | 72h |
| 63 | 4.3.1.1 | Progettazione Pagina Profilo | 2d | 2021-04-01 | 2021-04-02 |  | 2d | 0d | prog web , ux | 16h |
| 64 | 4.3.1.2 | Realizzazione Pagina Profilo | 1d | 2021-04-05 | 2021-04-05 | 63 | 4d |  | dev 2 | 8h |
| 65 | 4.3.2.1 | Progettazione Pagina Login | 2d | 2021-04-01 | 2021-04-02 |  | 2d | 0d | prog web , ux | 16h |
| 66 | 4.3.2.2 | Realizzazione Pagina Login | 1d | 2021-04-05 | 2021-04-05 | 65 | 4d |  | dev 1 | 8h |
| 67 | 4.3.3.1 | Progettazione Registrazione | 2d | 2021-04-05 | 2021-04-06 | 63, 65 | 2d | 0d | prog web, ux | 16h |
| 68 | 4.3.3.2 | Realizzazione Registrazione | 1d | 2021-04-07 | 2021-04-07 | 67 | 2d |  | dev 1 | 8h |
| 69 | 4.4 | **Area E-commerce** | 8d | 2021-04-08 | 2021-04-19 | 62 | 2d | 0d |  | 104h |
| 70 | 4.4.1.1 | Progettazione area recensioni | 3d | 2021-04-08 | 2021-04-12 |  | 2d | 0d | prog web , ux | 24h |
| 71 | 4.4.1.2 | Realizzazione area recensioni | 2d | 2021-04-13 | 2021-04-14 | 70 | 5d |  | dev1 | 16h |
| 72 | 4.4.2.1 | Progettazione Carrello | 2d | 2021-04-13 | 2021-04-14 | 70 | 4d | 0d | prog web | 16h |
| 73 | 4.4.2.2 | Realizzazione Carrello | 1d | 2021-04-15 | 2021-04-15 | 72 | 4d |  | dev2 | 8h |
| 74 | 4.4.3.1 | Progettazione area acquisti | 3d | 2021-04-13 | 2021-04-15 | 70 | 2d | 0d | prog web, ux | 24h |
| 75 | 4.4.3.2 | Realizzazione area acquisti | 2d | 2021-04-16 | 2021-04-19 | 74 | 2d |  | dev3 | 16h |

| ID | WBS | Task | Duration | Start | Finish | Predecessors | Total slack | Free slack | Resources | Work |
| --- | --- | --- | --- | --- | --- | --- | --- | --- | --- | --- |
| 76 | 4.5 | **Area Prodotto** | 3d | 2021-04-20 | 2021-04-22 | 69 | 2d | 0d |  | 40h |
| 77 | 4.5.1.1 | Progettazione pagina prodotto | 2d | 2021-04-20 | 2021-04-21 |  | 2d | 0d | prog web, ux | 16h |
| 78 | 4.5.1.2 | Realizzazione pagina prodotto | 1d | 2021-04-22 | 2021-04-22 | 77 | 2d |  | dev1 | 8h |
| 79 | 4.5.2.1 | Progettazione Modifica Prodotto | 1d | 2021-04-20 | 2021-04-20 |  | 3d | 0d | prog web, ux | 8h |
| 80 | 4.5.2.2 | Realizzazione Modifica Prodotto | 1d | 2021-04-21 | 2021-04-21 | 79 | 3d |  | dev2 | 8h |
| 81 | 4.6 | **Area Social** | 4d | 2021-04-23 | 2021-04-28 | 76 | 9d |  |  | 68h |
| 82 | 4.6.1.1 | Progettazione Visualizza profilo utente e designer | 2d | 2021-04-23 | 2021-04-26 |  | 10d | 0d | prog web, ux | 16h |
| 83 | 4.6.1.2 | Realizzazione Visualizza profilo utente e designer | 1d | 2021-04-27 | 2021-04-27 | 82 | 10d |  | dev1 | 8h |
| 84 | 4.6.2.1 | Progettazione Area Lavora con noi | 1d | 2021-04-23 | 2021-04-23 |  | 11.5d | 0d | prog web | 8h |
| 85 | 4.6.2.2 | Realizzazione Area Lavora con noi | 0.5d | 2021-04-26 | 2021-04-26 | 84 | 11.5d |  | dev1 | 4h |
| 86 | 4.6.3.1 | Progettazione Chat | 2d | 2021-04-23 | 2021-04-26 |  | 9d | 0d | prog web, ux | 16h |
| 87 | 4.6.3.2 | Realizzazione Chat | 2d | 2021-04-27 | 2021-04-28 | 86 | 9d |  | dev2 | 16h |
| 88 | 4.7 | **Area Moderatore** | 4d | 2021-04-23 | 2021-04-28 | 76 | 2d | 0d |  | 32h |
| 89 | 4.7.1 | Progettazione Area Candidati Designer | 2d | 2021-04-23 | 2021-04-26 |  | 2d | 0d | prog web | 16h |
| 90 | 4.7.2 | Realizzazione Area Candidati Designer | 2d | 2021-04-27 | 2021-04-28 | 89 | 2d |  | dev1 | 16h |
| 91 | 4.8 | **Area Gestionale** | 4d | 2021-04-29 | 2021-05-04 | 88 | 2d | 0d |  | 64h |
| 92 | 4.8.1 | Progettazione Area Ordini | 2d | 2021-04-29 | 2021-04-30 |  | 2d | 0d | prog web, ux | 16h |
| 93 | 4.8.2 | Realizzazione Area Ordini | 2d | 2021-05-03 | 2021-05-04 | 92 | 2d |  | dev1 | 16h |
| 94 | 4.8.3 | Progettazione Area Gestione Produzione | 2d | 2021-04-29 | 2021-04-30 |  | 2d | 0d | prog web, ux | 16h |
| 95 | 4.8.4 | Realizzazione Area Gestione Produzione | 2d | 2021-05-03 | 2021-05-04 | 94 | 2d |  | dev2 | 16h |
| 96 | 4.9 | **Area Ricerca e Classifica** | 3d | 2021-05-05 | 2021-05-07 | 91 | 2d |  |  | 40h |
| 97 | 4.9.1 | Progettazione Area Classifica | 1d | 2021-05-05 | 2021-05-05 |  | 2d | 0d | prog web | 8h |
| 98 | 4.9.2 | Realizzazione Area Classifica | 2d | 2021-05-06 | 2021-05-07 | 97 | 2d |  | dev1 | 16h |
| 99 | 4.9.3 | Progettazione Area Ricerca Prodotto | 1d | 2021-05-05 | 2021-05-05 |  | 3d | 0d | prog web | 8h |
| 100 | 4.9.4 | Realizzazione Area Ricerca Prodotto | 1d | 2021-05-06 | 2021-05-06 | 99 | 3d |  | dev2 | 8h |
